# openSUSE 12.2

Schedule from Planner, 2012-08-04 to 2012-09-13.
SUSE

## Calendars

- Vorgabe: Mon-Sun 08:00-12:00, 13:00-17:00.

## Schedule

| ID | WBS | Task | Start | Finish | Predecessors | Work |
| --- | --- | --- | --- | --- | --- | --- |
| 1 | 1 | **Pre-Gold Master development** | 2012-08-04 | 2012-08-09 |  | 376h |
| 2 | 1.1 | Expected new features document | 2012-08-04 | 2012-08-04 |  | 8h |
| 3 | 1.2 | test patterns | 2012-08-04 | 2012-08-04 |  | 8h |
| 4 | 1.3 | create test plan | 2012-08-05 | 2012-08-05 | 2 | 8h |
| 5 | 1.4 | **Manuals** | 2012-08-04 | 2012-08-08 |  | 32h |
| 6 | 1.4.1 | document new features | 2012-08-04 | 2012-08-04 |  | 8h |
| 7 | 1.4.2 | detect obsolete sections in Manuals | 2012-08-04 | 2012-08-04 |  | 8h |
| 8 | 1.4.3 | update manuals | 2012-08-05 | 2012-08-05 | 7, 6 | 8h |
| 9 | 1.4.4 | documentation team finished | 2012-08-08 | 2012-08-08 | 15 | 8h |
| 10 | 1.5 | **Translations** | 2012-08-04 | 2012-08-07 |  | 40h |
| 11 | 1.5.1 | manuals | 2012-08-06 | 2012-08-06 | 8 | 8h |
| 12 | 1.5.2 | package descriptions | 2012-08-04 | 2012-08-04 |  | 8h |
| 13 | 1.5.3 | package strings | 2012-08-04 | 2012-08-04 |  | 8h |
| 14 | 1.5.4 | release notes | 2012-08-04 | 2012-08-04 |  | 8h |
| 15 | 1.5.5 | translation check finished | 2012-08-07 | 2012-08-07 | 12, 13, 11 | 8h |
| 16 | 1.6 | **Security** | 2012-08-04 | 2012-08-05 |  | 48h |
| 17 | 1.6.1 | review new setuid binaries | 2012-08-04 | 2012-08-04 |  | 8h |
| 18 | 1.6.2 | review new network services | 2012-08-04 | 2012-08-04 |  | 8h |
| 19 | 1.6.3 | review new dbus services | 2012-08-04 | 2012-08-04 |  | 8h |
| 20 | 1.6.4 | review new policykit policies | 2012-08-04 | 2012-08-04 |  | 8h |
| 21 | 1.6.5 | update Apparmor profiles | 2012-08-04 | 2012-08-04 |  | 8h |
| 22 | 1.6.6 | security check finished | 2012-08-05 | 2012-08-05 | 21, 20, 19, 18, 17 | 8h |
| 23 | 1.7 | **prepare stable branch** | 2012-08-04 | 2012-08-06 |  | 48h |
| 24 | 1.7.1 | branch new distro in OBS | 2012-08-04 | 2012-08-04 |  | 8h |
| 25 | 1.7.2 | enable ARCHIVES.gz and suse repo data | 2012-08-04 | 2012-08-04 |  | 8h |
| 26 | 1.7.3 | bump release numbers in Factory | 2012-08-05 | 2012-08-05 | 24 | 8h |
| 27 | 1.7.4 | Remove "Beta" tags from packages and configs | 2012-08-05 | 2012-08-05 | 24 | 8h |
| 28 | 1.7.5 | set up Update project | 2012-08-05 | 2012-08-05 | 24 | 8h |
| 29 | 1.7.6 | notify maintenance & security about new branch | 2012-08-06 | 2012-08-06 | 28 | 8h |

Notes:
- 1: Tasks that need to be done for Alpha, Beta and RC releases that affect the Gold Master Release
- 2: Compile a list of features for the new release. E.g by querying fate
- 3: e.g. minimal pattern to fit the expected size of 500-600 MB
- 4: define test cases for QA
- 5: Tasks related with the 12.2 manuals. The Documentation Team coordinate them.
- 6: Relevant new features shipped with the Release need to be added to the Manuals.
- 7: review manual and check which parts need to be removed or rewritten
- 8: integrate changes into the manual
- 9: checkpoint for doc team being ready
- 10: Tasks related with translations. A coordinator needs to be defined here. / http://i18n.opensuse.org/stats
- 11: translate openSUSE manuals to major languages
- 12: translate rpm package descriptions and summaries for at least the main languages
- 13: translate the packaged application itself and the .desktop file
- 14: translate the release notes into the main languages
- 15: checkpoint for all translations being ready
- 16: Task related with security. It is desired to include them in the release process.
- 17: the security team audits all new binaries that have the setuid bit set to find potential security issues before the release
- 18: the security team audits new network services to find potential security issues before the release
- 19: the security team audits all new D-Bus services to find potential security issues before the release
- 20: the security team audits services that install new policykit privileges to find potential security issues before the release
- 21: apparmor profiles need to be checked and potentially be updated to make sure they are still match the packages
- 22: checkpoint for security team bein ready
- 23: create a stable branch so development in Factory can continue
- 24: branch openSUSE:XX.Y from openSUSE:Factory
- 25: both is turned off for performance reasons in Factory, needs to be enabled in stable branch though
- 26: package release numbers in Factory need to be higher than in the released product so people who follow development can easily upgrade / Should happen automatically by build service call for branch
- 27: Use final release string in /etc/issue and remove beta.txt from install media.
- 28: openSUSE:XX.Y:Update, use previous distro as template
- 29: the Maintenance and Security teams need to know that a new distribution is about to receive online updates

| ID | WBS | Task | Start | Finish | Predecessors | Work |
| --- | --- | --- | --- | --- | --- | --- |
| 30 | 1.8 | **Bug fixing** | 2012-08-04 | 2012-08-07 |  | 40h |
| 31 | 1.8.1 | fix bug | 2012-08-04 | 2012-08-04 |  | 8h |
| 32 | 1.8.2 | submit package | 2012-08-05 | 2012-08-05 | 31 | 8h |
| 33 | 1.8.3 | review package | 2012-08-06 | 2012-08-06 | 32 | 8h |
| 34 | 1.8.4 | check in to distribution | 2012-08-07 | 2012-08-07 | 33 | 8h |
| 35 | 1.8.5 | update most annoying bugs list | 2012-08-04 | 2012-08-04 |  | 8h |
| 36 | 1.9 | update rsync modules used by the mirrors | 2012-08-04 | 2012-08-04 |  | 8h |
| 37 | 1.10 | Go from Legal team | 2012-08-04 | 2012-08-04 |  | 8h |
| 38 | 1.11 | Go/Nogo for declaring RC? | 2012-08-09 | 2012-08-09 | 35, 34, 37, 9, 22, 10, 30, 27, 4, 36, 2 | 8h |
| 39 | 1.12 | **Artwork** | 2012-08-04 | 2012-08-06 |  | 120h |
| 40 | 1.12.1 | run competition for best artwork | 2012-08-04 | 2012-08-04 |  | 8h |
| 41 | 1.12.2 | Basic design | 2012-08-05 | 2012-08-05 | 40 | 8h |
| 42 | 1.12.3 | bootsplash | 2012-08-06 | 2012-08-06 | 41 | 8h |
| 43 | 1.12.4 | desktop splash screens | 2012-08-06 | 2012-08-06 | 41 | 8h |
| 44 | 1.12.5 | wallpapers | 2012-08-06 | 2012-08-06 | 41 | 8h |
| 45 | 1.12.6 | Poster | 2012-08-06 | 2012-08-06 | 41 | 8h |
| 46 | 1.12.7 | Sticker | 2012-08-06 | 2012-08-06 | 41 | 8h |
| 47 | 1.12.8 | Flyers | 2012-08-06 | 2012-08-06 | 41 | 8h |
| 48 | 1.12.9 | T-Shirts | 2012-08-06 | 2012-08-06 | 41 | 8h |
| 49 | 1.12.10 | download banner | 2012-08-06 | 2012-08-06 | 41 | 8h |
| 50 | 1.12.11 | Countdown | 2012-08-06 | 2012-08-06 | 41 | 8h |
| 51 | 1.12.12 | Promo DVD Sleeve | 2012-08-06 | 2012-08-06 | 41 | 8h |
| 52 | 1.12.13 | Presentation | 2012-08-06 | 2012-08-06 | 41, 2 | 8h |
| 53 | 1.12.14 | Create screenshot guidelines | 2012-08-04 | 2012-08-04 |  | 8h |
| 54 | 1.12.15 | Screenshots | 2012-08-05 | 2012-08-05 | 53 | 8h |

Notes:
- 30: This is a continuos task done by the Release Team, openSUSE Team, packagers and others. Added here to reflect the final process
- 31: the packager fixes bug in his package(s)
- 32: the packager submits the package for inclusion in the distribution
- 33: the opensuse review team reviews each package to decide whether or not to accept them
- 34: the opensuse release team checks the package into the appropriate distribution
- 35: Add bugs that affect lots of users to the list of most annoying bugs: / http://en.opensuse.org/openSUSE:Most_annoying_bugs
- 36: adjust rsync modules for full-, 160GB- and 80GB-mirrors to make sure the most requested files have a sufficient amount of mirrors
- 37: legal team finished review and declares all issues being solved
- 38: When all teams give their ok which means the current build is in good shape the build can be declared as Release Candidate (RC)
- 39: http://gitorious.org/opensuse/art/trees/master
- 40: competition and voting for design of next release
- 41: create a common theme as basis
- 42: splash screen for plymouth used during boot
- 43: splash screen when starting up KDE, GNOME etc
- 44: wallpapers used on the desktop background
- 45: Promotion poster
- 46: Promotion stickers
- 47: Design and production of promotion flyers
- 48: Design and production of promotion T-Shirts / (not for each release)
- 49: download banner for www.opensuse.org
- 50: The countdown until release date on opensuse.org
- 51: http://gitorious.org/opensuse/art/trees/master/CD-sleeve / sleeve and the ring on the cd
- 52: Create slides about the most important features of the new release for being used in presentations on OS events.
- 54: Create screen shots of the installation and highlights of the distribution / Must be creative commons license so the press can use them

| ID | WBS | Task | Start | Finish | Predecessors | Work |
| --- | --- | --- | --- | --- | --- | --- |
| 55 | 2 | **Gold Master development** | 2012-08-11 | 2012-08-21 | 193 | 248h |
| 56 | 2.1 | Call for Release Parties | 2012-08-11 | 2012-08-11 | 193 | 8h |
| 57 | 2.2 | collect stats for RC | 2012-08-11 | 2012-08-11 |  | 8h |
| 58 | 2.3 | Update Release notes | 2012-08-14 | 2012-08-14 | 70 | 8h |
| 59 | 2.4 | Install Countdown link | 2012-08-11 | 2012-08-11 | 50 | 8h |
| 60 | 2.5 | **Pre-release articles** | 2012-08-15 | 2012-08-16 | 39 | 16h |
| 61 | 2.5.1 | Create pre-release articles | 2012-08-15 | 2012-08-15 | 52, 58, 54 | 8h |
| 62 | 2.5.2 | Publish pre-release articles | 2012-08-16 | 2012-08-16 | 61 | 8h |
| 63 | 2.6 | Purchase Order for Promo DVDs | 2012-08-11 | 2012-08-11 | 51 | 8h |
| 64 | 2.7 | **monitor bug reports** | 2012-08-11 | 2012-08-14 |  | 24h |
| 65 | 2.7.1 | flag release critical bugs | 2012-08-11 | 2012-08-11 | 191 | 8h |
| 66 | 2.7.2 | remind people to fix critical bugs | 2012-08-12 | 2012-08-12 | 65 | 8h |
| 67 | 2.7.3 | Update the most annoying bugs list | 2012-08-14 | 2012-08-14 | 66, 70 | 8h |
| 68 | 2.8 | **Checks and tests** | 2012-08-11 | 2012-08-17 |  | 72h |
| 69 | 2.8.1 | verify iso sizes fit media | 2012-08-15 | 2012-08-15 | 67 | 8h |
| 70 | 2.8.2 | check that all release critical bugs are fixed | 2012-08-13 | 2012-08-13 | 66 | 8h |
| 71 | 2.8.3 | check release notes are usable | 2012-08-15 | 2012-08-15 | 58 | 8h |
| 72 | 2.8.4 | ensure all packages build | 2012-08-11 | 2012-08-11 |  | 8h |
| 73 | 2.8.5 | check manuals contain all changes | 2012-08-11 | 2012-08-11 |  | 8h |
| 74 | 2.8.6 | Verify QA testplan is succeeded | 2012-08-11 | 2012-08-11 |  | 8h |
| 75 | 2.8.7 | performance regression tests | 2012-08-11 | 2012-08-11 |  | 8h |
| 76 | 2.8.8 | check distro upgrade works | 2012-08-16 | 2012-08-16 | 69 | 8h |
| 77 | 2.8.9 | test live CDs | 2012-08-17 | 2012-08-17 | 76, 72, 69 | 8h |
| 78 | 2.9 | **Legal** | 2012-08-11 | 2012-08-13 |  | 32h |
| 79 | 2.9.1 | package list | 2012-08-11 | 2012-08-11 |  | 8h |
| 80 | 2.9.2 | proprietary components | 2012-08-11 | 2012-08-11 |  | 8h |
| 81 | 2.9.3 | IPRQ document | 2012-08-12 | 2012-08-12 | 80, 79 | 8h |
| 82 | 2.9.4 | go from Legal | 2012-08-13 | 2012-08-13 | 81 | 8h |

Notes:
- 55: Milestone that covers from the RC2 Release to the Go/NoGo decision for the final Release
- 56: http://en.opensuse.org/openSUSE:Launch_parties / http://en.opensuse.org/openSUSE:Launch_party_HOWTO / http://news.opensuse.org/2011/11/15/join-or-organize-opensuse-12-1-launch-parties
- 58: update release notes with issues found during development
- 59: put a link to the countdown on Frontpages of all wikis, forum and www.opensuse.org
- 60: Publishing articles describing the ongoing work on the Release by the openSUSE / Team at SUSE.
- 61: This articles cover the major features we are presenting in the Release. These articles can be done by the openSUSE Team and the community
- 63: Select Fab / Decide how many DVDs to produce in which country and which Fab is going to do it.
- 64: ongoing bugzilla work
- 65: set ship_stopper flag on bugs that need to be resolved before release
- 66: Remind the developers or packagers about the deadlines for submittting the fixes to include them on the final release.
- 67: http://en.opensuse.org/openSUSE:Most_annoying_bugs Informative page about the most common problems they can find in the Release because they are not fixed by us, upstream, hardware manufactures.....
- 68: Verifications tasks to check the needed work is done. Approval requested by the Release Manager to the different coordinators
- 69: make sure iso images are not too big to fit on the medium. Note that pressed CDs may not be as large as burned ones!
- 75: make sure the kernel, networking and the most important services are not slower than before
- 76: verify release numbers of all packages are higher than in the previous release
- 77: openSUSE:XX.Y:Live / not done yet by openQA so needs to be done manually
- 78: Legal requirements for products hosted by SUSE
- 79: compile a list of all packages in the distribution with the version and license
- 80: compile a list of all proprietary components with their EULAs
- 81: Document needed for each Product released by SUSE, get it from the attorneys, fill in and send it back
- 82: Legal department gives its approval to the Release

| ID | WBS | Task | Start | Finish | Predecessors | Work |
| --- | --- | --- | --- | --- | --- | --- |
| 83 | 2.10 | **Add-On DVD for box vendor** | 2012-08-11 | 2012-08-20 |  | 40h |
| 84 | 2.10.1 | create package lists | 2012-08-11 | 2012-08-11 |  | 8h |
| 85 | 2.10.2 | integrate live images for KDE and GNOME | 2012-08-18 | 2012-08-18 | 77 | 8h |
| 86 | 2.10.3 | add extra content needed by manufacturer | 2012-08-11 | 2012-08-11 |  | 8h |
| 87 | 2.10.4 | create custom boot menu | 2012-08-19 | 2012-08-19 | 85, 86 | 8h |
| 88 | 2.10.5 | test the DVD | 2012-08-20 | 2012-08-20 | 84, 87 | 8h |
| 89 | 2.11 | Review upgrade portal page | 2012-08-16 | 2012-08-16 | 71 | 8h |
| 90 | 2.12 | verify delta rpms work | 2012-08-11 | 2012-08-11 |  | 8h |
| 91 | 2.13 | Declare build as GMC | 2012-08-21 | 2012-08-21 | 82, 68, 63, 62, 59, 88, 77, 89, 90, 83, 188 | 8h |
| 92 | 3 | **Go/no Go meeting** | 2012-08-22 | 2012-08-22 | 55 | 8h |
| 93 | 3.1 | Go decision | 2012-08-22 | 2012-08-22 | 91 | 8h |
| 94 | 4 | **Release process** | 2012-08-24 | 2012-09-08 | 194 | 553.3h |
| 95 | 4.1 | Upload GM to internal server (dist) | 2012-08-24 | 2012-08-24 |  | 8h |
| 96 | 4.2 | Announce GM internally | 2012-08-24 | 2012-08-24 |  | 8h |
| 97 | 4.3 | Sneak Peeks | 2012-08-24 | 2012-08-24 | 193 | 8h |
| 98 | 4.4 | www.opensuse.org text snippet | 2012-08-24 | 2012-08-24 | 49 | 8h |
| 99 | 4.5 | **Iso images** | 2012-08-24 | 2012-08-25 |  | 16h |
| 100 | 4.5.1 | create delta isos | 2012-08-24 | 2012-08-24 |  | 8h |
| 101 | 4.5.2 | sign the iso images | 2012-08-25 | 2012-08-25 | 100 | 8h |
| 102 | 4.6 | **Bitorrent** | 2012-08-24 | 2012-08-24 |  | 16h |
| 103 | 4.6.1 | find external seeders | 2012-08-24 | 2012-08-24 |  | 8h |
| 104 | 4.6.2 | create torrent meta data | 2012-08-24 | 2012-08-24 |  | 8h |
| 105 | 4.7 | prepare release on internal staging server | 2012-08-26 | 2012-08-26 | 104, 101 | 8h |
| 106 | 4.8 | update mirrors.opensuse.org | 2012-08-24 | 2012-08-24 |  | 8h |

Notes:
- 83: there's still a boxed version in germany that wants to also ship some non-oss components. done by opensource press / the 2nd DVD is actually both an addon for openSUSE as well as a bootable live medium itself which makes things a bit more complicated
- 84: work out package list together with vendor
- 85: DVD can boot live images so they need to be included
- 86: opensource press wants to add some extra content added by them
- 87: custom boot menu config is needed
- 88: the new DVD needs to be tested
- 89: Review and Verify our upgrade portal page at http://en.opensuse.org/Upgrade
- 90: make sure maintenance update repo generates proper delta rpms and zypper applies them
- 91: The Release Manager get approval from the different coordinators and declare the final build as Gold Master Candidate
- 92: Management meeting.
- 93: Management meeting including the Release Manager and the different managers involved in the Release process to confirm the Release, modify the final date or reject the Gold Master Candidate
- 94: things done the days and hours between GM and GA
- 97: Daily blog posts about selected features of the new release to create expectations. Blog posts about the release features:
- 98: there's a small paragraph on www.opensuse.org that refers to download, highlighs etc.
- 99: manual work done by the autobuild team to prepare the iso images
- 100: deltas are needed to reduce the download size for those that have the previous build already
- 101: add detached gpg signature of opensuse key
- 102: set up bittorrent infrastructure to be ready for taking the load at release time
- 103: ask mirror admins whether they could seed the torrent
- 104: create tracker files and register them with the tracker
- 106: add the new release to the index page / set "markers" for the new release / /srv/www/vhosts/mirrors.opensuse.org/openSUSE_html_header

| ID | WBS | Task | Type | Duration | Start | Finish | Predecessors | Complete | Work |
| --- | --- | --- | --- | --- | --- | --- | --- | --- | --- |
| 107 | 4.9 | **update the staging area for the mirrors** |  |  | 2012-08-27 | 2012-08-28 | 106, 105 |  | 16h |
| 108 | 4.9.1 | update meta links |  |  | 2012-08-27 | 2012-08-27 |  | 25% | 8h |
| 109 | 4.9.2 | inform mirror admins about upcoming release |  |  | 2012-08-28 | 2012-08-28 | 108 |  | 8h |
| 110 | 4.10 | use mirrorbrain to check for broken mirrors |  |  | 2012-08-29 | 2012-08-29 | 109, 107 |  | 8h |
| 111 | 4.11 | Product highlights page |  |  | 2012-08-24 | 2012-08-24 | 54 |  | 8h |
| 112 | 4.12 | Translate opensuse.org front page |  |  | 2012-08-24 | 2012-08-24 |  |  | 8h |
| 113 | 4.13 | virtual PR package |  |  | 2012-08-24 | 2012-08-24 |  |  | 8h |
| 114 | 4.14 | Videocasts |  |  | 2012-08-24 | 2012-08-24 |  |  | 8h |
| 115 | 4.15 | press kit |  |  | 2012-08-25 | 2012-08-25 | 111 |  | 8h |
| 116 | 4.16 | pre-information for press and ambassadors |  |  | 2012-08-26 | 2012-08-26 | 115 |  | 8h |
| 117 | 4.17 | reminder for press and ambassadors |  |  | 2012-08-27 | 2012-08-27 | 116 |  | 8h |
| 118 | 4.18 | make GM available to forum staff |  |  | 2012-08-24 | 2012-08-24 |  |  | 8h |
| 119 | 4.19 | provide Promo DVD images to Fab |  |  | 2012-08-24 | 2012-08-24 | 51, 93 |  | 8h |
| 120 | 4.20 | Promo DVD production |  | 10d | 2012-08-25 | 2012-09-03 | 119 |  |  |
| 121 | 4.21 | Send PR package |  |  | 2012-09-04 | 2012-09-04 | 47, 46, 45, 120 |  | 8h |
| 122 | 4.22 | Tell ambassadors that they can order promo dvds |  |  | 2012-09-04 | 2012-09-04 | 120 |  | 8h |
| 123 | 4.23 | **update web sites** |  |  | 2012-08-24 | 2012-08-30 |  |  | 120h |
| 124 | 4.23.1 | **wiki** |  |  | 2012-08-24 | 2012-08-30 |  |  | 64h |
| 125 | 4.23.1.1 | front pages of all languages |  |  | 2012-08-25 | 2012-08-25 | 126, 114, 112 |  | 8h |
| 126 | 4.23.1.2 | Move Wiki articles to archive |  |  | 2012-08-24 | 2012-08-24 |  |  | 8h |
| 127 | 4.23.1.3 | http://en.opensuse.org/Welcome_to_openSUSE.org |  |  | 2012-08-26 | 2012-08-26 | 125 |  | 8h |
| 128 | 4.23.1.4 | http://en.opensuse.org/Development_Version |  |  | 2012-08-27 | 2012-08-27 | 127 |  | 8h |
| 129 | 4.23.1.5 | http://en.opensuse.org/Bugs:Most_Annoying_Bugs |  |  | 2012-08-28 | 2012-08-28 | 128 |  | 8h |
| 130 | 4.23.1.6 | http://en.opensuse.org/Template:ReleasesTable |  |  | 2012-08-29 | 2012-08-29 | 129 |  | 8h |
| 131 | 4.23.1.7 | http://en.opensuse.org/Roadmap |  |  | 2012-08-30 | 2012-08-30 | 130 |  | 8h |
| 132 | 4.23.1.8 | http://de.opensuse.org/OpenSUSE_kaufen |  |  | 2012-08-24 | 2012-08-24 |  |  | 8h |
| 133 | 4.23.2 | forum |  |  | 2012-08-24 | 2012-08-24 |  |  | 8h |
| 134 | 4.23.3 | www.opensuse.org |  |  | 2012-08-25 | 2012-08-25 | 98 |  | 8h |
| 135 | 4.23.4 | static.opensuse.org for screenshots |  |  | 2012-08-24 | 2012-08-24 |  |  | 8h |
| 136 | 4.23.5 | opensuse-community.org |  |  | 2012-08-24 | 2012-08-24 |  |  | 8h |
| 137 | 4.23.6 | opensuse-education.org |  |  | 2012-08-24 | 2012-08-24 |  |  | 8h |
| 138 | 4.23.7 | planet.opensuse.org |  |  | 2012-08-24 | 2012-08-24 |  |  | 8h |
| 139 | 4.23.8 | shop.opensuse.org |  |  | 2012-08-24 | 2012-08-24 |  |  | 8h |
| 140 | 4.24 | enable component "Final" in Bugzilla |  |  | 2012-08-24 | 2012-08-24 |  |  | 8h |
| 141 | 4.25 | update doc.opensuse.org |  |  | 2012-08-24 | 2012-08-24 |  |  | 8h |
| 142 | 4.26 | https://www.suse.com/documentation |  |  | 2012-08-25 | 2012-08-25 | 141 |  | 8h |
| 143 | 4.27 | Checkpoint: wiki/webs updated, mirrors ready | milestone | 0d | 2012-08-30 | 2012-08-30 | 142, 147, 141, 131, 140 |  |  |
| 144 | 4.28 | XXX: clarify: download redirector |  |  | 2012-08-27 | 2012-08-27 | 105 |  | 8h |
| 145 | 4.29 | SUSE press release |  |  | 2012-08-28 | 2012-08-28 | 111, 165 |  | 8h |
| 146 | 4.30 | Press interviews |  |  | 2012-08-29 | 2012-08-29 | 145 |  | 8h |
| 147 | 4.31 | Presentation |  |  | 2012-08-24 | 2012-08-24 | 39 |  | 8h |
| 148 | 4.32 | make files readable on staging server |  |  | 2012-08-31 | 2012-08-31 | 167, 110, 143 |  | 8h |
| 149 | 4.33 | make all files visible on download.o.o |  |  | 2012-09-01 | 2012-09-01 | 148 |  | 8h |
| 150 | 4.34 | change openSUSE-current |  |  | 2012-09-02 | 2012-09-02 | 149 |  | 8h |
| 151 | 4.35 | rescan mirrors |  |  | 2012-09-02 | 2012-09-02 | 149 |  | 8h |
| 152 | 4.36 | wait for mirrors to fill up |  |  | 2012-09-03 | 2012-09-03 | 151 |  | 8h |
| 153 | 4.37 | update software.opensuse.org download pages |  |  | 2012-08-24 | 2012-08-24 |  |  | 8h |
| 154 | 4.38 | update software.opensuse.org search bar |  |  | 2012-08-24 | 2012-08-24 |  |  | 8h |
| 155 | 4.39 | deploy software.opensuse.org |  |  | 2012-09-04 | 2012-09-04 | 154, 152, 153 |  | 8h |
| 156 | 4.40 | test software.opensuse.org |  |  | 2012-09-05 | 2012-09-05 | 155 |  | 8h |
| 157 | 4.41 | create is_maintained data |  |  | 2012-08-24 | 2012-08-24 |  |  | 8h |

Notes:
- 108: meta link files for aria2
- 109: tell them about the new isos and the proposed release date / => mirror@opensuse.org
- 110: make sure permissions on mirrors are correct
- 111: http://en.opensuse.org/openSUSE:Product_highlights_writing, http://en.opensuse.org/Product_highlights ask teams of important components to provide some text. Use release feature page as a base for this wiki page.
- 112: ask translatin list to do that
- 113: Create virtual PR package (promo package) for ambassadors to promote new release. Upload or link files to Posters, flyers etc in wiki.
- 114: make some nice video cast, e.g. from the installation. maybe use openQA / Bernhard used to use kdenlive to cut the video and put music into it
- 115: promotional materials for the press / http://en.opensuse.org/openSUSE:Press_kit
- 116: download link, presentation, link to distribution page
- 117: download link, presentation, link to distribution page
- 118: allow forum staff to access the GM before public release / Jim Henderson <hendersj@gmail.com>
- 119: promo DVD image needs to be uploaded to Fab so they can start production
- 121: Items: / * Poster DIN A1 / * Poster(s) DIN A3 / * Flyer C6 (openSUSE Flyer) / * Bookmarks / * DVDs / * Sticker
- 123: several web pages need to be updated to refer to the new release
- 124: openSUSE wiki pages that need to be updated. They are not properly linked until the Release date.
- 126: Move old distribution to Archive, update pages for new release / needs help from the wiki admin
- 133: Update the forum to receive questions about the release.
- 135: Update style sheets (and java script) on both static.opensuse.org hosts via svn up
- 140: Bugzilla has to have a component "Final" so people can report bugs they find
- 141: Upload documentation to doc.opensuse.org
- 142: notify web team to install redirect for new release to doc.opensuse.org / file bug for karulkumar@novell.com
- 143: wiki needs to be updated before the announcement otherwise the server load will not allow editing it anymore
- 144: Open up infrastructure so download redirector handles all files
- 145: write official announcemnt by the company about openSUSE
- 146: The Release Manager (coolo) and the openSUSE Project Manager (AJ) will be available for the press
- 147: Creation of presentation for anyone to use / https://github.com/openSUSE/artwork/tree/master/slides
- 148: all mirrors can now catch up / do this four hours before the announcement
- 149: make all files visible on download.opensuse.org, incl iso images
- 150: change symlink openSUSE-current in distribution/ and update/ to point to new release
- 151: tell mirrorbrain to rescan mirrors
- 152: 15-20 mirrors should have picked up the new release before announcing the release
- 153: git@gitorious.org:opensuse/software-o-o.git / app/controllers/main_controller.rb
- 155: changes were only made in git so far so the git repo needs to be deployed to the server to make the new content visible
- 156: make sure all links work fine
- 157: internal data used mainly by security to determine which packages are in which release

| ID | WBS | Task | Start | Finish | Predecessors | Work |
| --- | --- | --- | --- | --- | --- | --- |
| 158 | 4.42 | **make sure 3rd party repos are prepared** | 2012-08-24 | 2012-08-25 |  | 32h |
| 159 | 4.42.1 | Nvidia | 2012-08-24 | 2012-08-24 |  | 8h |
| 160 | 4.42.2 | ATI | 2012-08-24 | 2012-08-24 |  | 8h |
| 161 | 4.42.3 | Packman | 2012-08-24 | 2012-08-24 |  | 8h |
| 162 | 4.42.4 | update community repo link | 2012-08-25 | 2012-08-25 | 159, 160, 161 | 8h |
| 163 | 4.43 | Create Google alerts for openSUSE 12.2 | 2012-08-24 | 2012-08-24 |  | 8h |
| 164 | 4.44 | **Release announcement** | 2012-08-25 | 2012-09-06 | 111 | 33.3h |
| 165 | 4.44.1 | Write release announcement | 2012-08-27 | 2012-08-27 | 116, 111, 147, 141 | 8h |
| 166 | 4.44.2 | Translate release announcement | 2012-08-28 | 2012-08-28 | 97, 165 | 8h |
| 167 | 4.44.3 | check the announcement | 2012-08-29 | 2012-08-29 | 158, 166 | 1h |
| 168 | 4.44.4 | Create correct links to webpages and wikies | 2012-08-31 | 2012-08-31 | 153, 146FS+24h, 163, 113, 114, 112, 167 | 8h |
| 169 | 4.44.5 | **Publish release announcement** | 2012-09-06 | 2012-09-06 | 156, 152, 168 | 0.3h |
| 170 | 4.44.5.1 | news.opensuse.org | 2012-09-06 | 2012-09-06 |  | 0.1h |
| 171 | 4.44.5.2 | opensuse-announce@opensuse.org | 2012-09-06 | 2012-09-06 |  | 0.1h |
| 172 | 4.44.5.3 | publish SUSE press release | 2012-09-06 | 2012-09-06 | 145 | 0.1h |
| 173 | 4.44.6 | update freecode entry | 2012-08-25 | 2012-08-25 |  | 8h |
| 174 | 4.45 | **Release monitoring** | 2012-09-06 | 2012-09-08 | 164 | 32h |
| 175 | 4.45.1 | promote launch on social media | 2012-09-06 | 2012-09-07 | 169 | 8h |
| 176 | 4.45.2 | repeatedly scan for new mirrors | 2012-09-06 | 2012-09-07 | 169 | 8h |
| 177 | 4.45.3 | watch bandwidth usage | 2012-09-07 | 2012-09-08 | 176 | 8h |
| 178 | 4.45.4 | Monitoring real time impact | 2012-09-06 | 2012-09-07 | 169 | 8h |
| 179 | 5 | **Evaluation** | 2012-09-09 | 2012-09-13 | 195 | 56h |
| 180 | 5.1 | collect press mentions | 2012-09-09 | 2012-09-10 | 178, 195, 163 | 8h |
| 181 | 5.2 | Collect stats about release | 2012-09-09 | 2012-09-10 | 195 | 8h |
| 182 | 5.3 | Create and publish conclusion article | 2012-09-10 | 2012-09-11 | 181, 180 | 8h |

Notes:
- 158: make sure 3rd party repos are ready for the new release
- 159: nvidia needs to publish their binary only drivers
- 160: ati needs to publish their binary only drivers
- 161: packman needs to make their repos build for the new release
- 162: https://github.com/openSUSE/download.o.o.git
- 163: get notification from google about activity wrt openSUSE
- 164: group of tasks that need to be done for the release announcement
- 165: on news.opensuse.org, / text based on product highlights page
- 166: We write the Announcement in English and community members translate it. We include those in the wiki and link them in the Release announcement before publishing / Wordpress on news.opensuse.org currently has no translation mechanism so we need to use the wiki for translations
- 167: Revision by the content/marketing coordinator. Communicate the ok to Release Manager.
- 168: The Release Manager approves this task. Needs to be coordinated with infrastructure, infrastructure needs to be open before publishing
- 169: The Release Manager gives ok for publishing the announcement / for the future this should be Tuesday 13:00 UTC
- 173: http://freecode.com/projects/suselinux
- 174: Task to be done the Release date after the announcement is out
- 175: facebook, twitter, google+ This task needs coordination with community / http://en.opensuse.org/openSUSE:Social_media_launch_plan
- 176: Task done by service team during Release day for several hours
- 177: Task done by service team on Release date
- 178: openSUSE Team, Release Team and community memebrss involved answer questions, are available in openSUSE Channels, etc.
- 179: post-release work
- 180: add links to articles by the press to http://en.opensuse.org/In_the_press
- 181: compile download statistics from web server logs
- 182: Article with mentions and summary of impact of 12.2 release, with quotes from media

| ID | WBS | Task | Start | Finish | Predecessors | Work |
| --- | --- | --- | --- | --- | --- | --- |
| 183 | 5.4 | **Create next product in Bugzilla** | 2012-09-09 | 2012-09-13 |  | 32h |
| 184 | 5.4.1 | File Bug report for NPP | 2012-09-09 | 2012-09-10 |  | 8h |
| 185 | 5.4.2 | Initialize product data (categories) | 2012-09-10 | 2012-09-11 | 184 | 8h |
| 186 | 5.4.3 | request product to be made public | 2012-09-11 | 2012-09-12 | 185 | 8h |
| 187 | 5.4.4 | setup milestones | 2012-09-12 | 2012-09-13 | 186 | 8h |
| 188 | 6 | **continuous openQA work** | 2012-08-04 | 2012-08-06 |  | 24h |
| 189 | 6.1 | update openQA testcases | 2012-08-04 | 2012-08-04 |  | 8h |
| 190 | 6.2 | debug issues found by openQA | 2012-08-05 | 2012-08-05 | 189 | 8h |
| 191 | 6.3 | file bugs for openQA issues | 2012-08-06 | 2012-08-06 | 190 | 8h |
| 192 | 7 | **Release process Roadmap check** | 2012-08-10 | 2012-09-09 |  | 24h |
| 193 | 7.1 | Define and publish Gold Master roadmap | 2012-08-10 | 2012-08-10 | 1, 38 | 8h |
| 194 | 7.2 | Define and publish Release schedule | 2012-08-23 | 2012-08-23 | 92 | 8h |
| 195 | 7.3 | Define Evaluation process roadmap | 2012-09-08 | 2012-09-09 | 178, 177, 175, 94 | 8h |

Notes:
- 183: Create the next version of openSUSE as product in bugzilla so people can start filing bugs
- 184: new products need to be requested by filing a bug report
- 185: copy data from previous product to new one
- 186: Bugzilla products are not public by default so that needs to be requested manually
- 187: e.g. when milestone 1 is released, add milestone 2
- 188: http://openqa.opensuse.org
- 189: changes in the installation workflow might require adjusting the scripts used by openQA
- 190: try to reproduce openQA failures locally to find the cause
- 191: file bug report with the details found during debugging
- 192: http://en.opensuse.org/openSUSE:Roadmap
- 193: define which tasks need to be done and when during RC phase / announce internally and externally
- 194: define what needs to be done at the day of the release / announce internally and externally
- 195: define which tasks need to be done after the release / announce internally and externally
